# 2025产品研发整体进度计划

Schedule from a web Gantt chart, 2024-10-14 to 2025-08-29.
Saturdays and Sundays are off

## Schedule

| ID | WBS | Task | Type | Duration | Start | Finish | Complete | inPeople |
| --- | --- | --- | --- | --- | --- | --- | --- | --- |
| 2 | 1 | 3.6.1开发 |  | 21d | 2024-12-06 | 2025-01-03 | 90% | 李忠洋；郭金玺；汪书刚 |
| 3 | 2 | **ARM64架构下的跨平台编译** |  | 47d | 2024-12-06 | 2025-02-10 |  |  |
| 4 | 2.1 | sz-ifc在arm下的编译 |  | 1d | 2024-12-06 | 2024-12-06 |  | 宋钰涛 |
| 5 | 2.2 | revit插件在arm下的模块编译 |  | 1d | 2025-02-10 | 2025-02-10 |  | 宋钰涛 |
| 6 | 2.3 | 平台调用方式的修改 |  | 1d | 2024-12-06 | 2024-12-06 |  | 李忠洋 |
| 7 | 3 | **成都院交付（引擎层）** |  | 85d | 2024-10-14 | 2025-02-07 | 69% |  |
| 8 | 3.1 | **离线查看器** |  | 65d | 2024-10-14 | 2025-01-10 | 91% |  |
| 9 | 3.1.1 | 离线查看客户端 | fixed start | 65d | 2024-10-14 | 2025-01-10 | 90% | 裴贺威 |
| 10 | 3.1.2 | 离线包导出功能（平台） | fixed end | 15d | 2024-12-23 | 2025-01-10 | 95% | 郭金玺；汪书刚 |
| 11 | 3.2 | **操作优化** |  | 15d | 2025-01-20 | 2025-02-07 |  |  |
| 12 | 3.2.1 | 三点对位 |  | 5d | 2025-01-20 | 2025-01-24 |  | 李坡 |
| 13 | 3.2.2 | 面夹角测量 |  | 2d | 2025-01-27 | 2025-01-28 |  | 李坡 |
| 14 | 3.2.3 | 面距离测量 |  | 3d | 2025-02-05 | 2025-02-07 |  | 李坡 |
| 15 | 3.3 | **3.6.1.1发布** |  | 15d | 2025-01-06 | 2025-01-24 |  |  |
| 16 | 3.3.1 | 历史版本目录树和属性 |  | 15d | 2025-01-06 | 2025-01-24 |  | 汪书刚 |
| 17 | 4 | **中冶京诚1期优化** |  | 1d | 2025-01-03 | 2025-01-03 |  |  |
| 18 | 4.1 | dgn相关优化 |  | 1d | 2025-01-03 | 2025-01-03 |  | 裴贺威 |
| 19 | 4.2 | 服务端相关优化 |  | 1d | 2025-01-03 | 2025-01-03 |  | 张昆峰 |
| 20 | 5 | **公路院课题交付** |  | 109d | 2025-01-03 | 2025-06-04 |  |  |
| 21 | 5.1 | 地形系统的多坐标系兼容改造 |  | 20d | 2025-01-03 | 2025-01-30 |  | 王栋栋 |
| 22 | 5.2 | wms、wmts服务的直接接入 |  | 20d | 2025-02-10 | 2025-03-07 |  | 李坡 |
| 23 | 5.3 | 全局矢量的点线面绘制（贴地矢量） |  | 3d | 2025-03-10 | 2025-03-12 |  | 李坡 |
| 24 | 5.4 | 获取干系瓦片的最高精度数据并重采样 |  | 7d | 2025-03-13 | 2025-03-21 |  | 李坡 |
| 25 | 5.5 | 相机2D锁定和地上锁定 |  | 2d | 2025-03-24 | 2025-03-25 |  | 李坡 |
| 26 | 5.6 | 模型不被地形遮挡的绘制模式 |  | 1d | 2025-03-26 | 2025-03-26 |  | 李坡 |
| 27 | 5.7 | gis天际线、通视分析等功能 |  | 30d | 2025-03-27 | 2025-05-07 |  | 李坡 |
| 28 | 5.8 | 矢量瓦片的接入（基础解析）-扩展 |  | 15d | 2025-05-15 | 2025-06-04 |  | 李坡 |

Notes:
- 2: 平台权限系统重构
- 15: 这个版本规划了成都院需要的接口监控，场景统计等平台功能

| ID | WBS | Task | Duration | Start | Finish | inPeople |
| --- | --- | --- | --- | --- | --- | --- |
| 29 | 6 | **云渲染交付** | 52d | 2024-12-23 | 2025-03-04 |  |
| 30 | 6.1 | 云渲染基础部分完善 | 20d | 2024-12-23 | 2025-01-17 | 王栋栋 |
| 31 | 6.2 | 云渲染服务器组件开发 | 15d | 2024-12-30 | 2025-01-17 | 张昆峰 |
| 32 | 6.3 | 使用云渲染模式的前端页面开发 | 5d | 2025-01-13 | 2025-01-17 | 郭金玺 |
| 33 | 6.4 | 云渲染接口层实现 | 20d | 2025-02-05 | 2025-03-04 | 程凯 |
| 34 | 7 | **粒子系统（引擎模块）** | 15d | 2024-12-30 | 2025-01-17 |  |
| 35 | 7.1 | 水粒子更新改为GPU管线 | 5d | 2024-12-30 | 2025-01-03 | 李坡 |
| 36 | 7.2 | 烟雾和火焰 | 10d | 2025-01-06 | 2025-01-17 | 李坡 |
| 37 | 8 | **动画系统引擎层** | 65d | 2025-01-13 | 2025-04-11 |  |
| 38 | 8.1 | 场景爆炸效果的优化 | 20d | 2025-01-13 | 2025-02-07 | 魏家霖 |
| 39 | 8.2 | 列车汽车路径动画的封装 | 15d | 2025-02-24 | 2025-03-14 | 魏家霖 |
| 40 | 8.3 | 触发器系统的实现 | 20d | 2025-03-17 | 2025-04-11 | 王栋栋；魏家霖 |
| 41 | 9 | **3.6.2版本开发** | 50d | 2025-02-10 | 2025-04-18 |  |
| 42 | 9.1 | 水面、单体化、开挖 | 10d | 2025-02-10 | 2025-02-21 | 李忠洋；郭金玺；汪书刚 |
| 43 | 9.2 | 单构件编辑 | 10d | 2025-02-26 | 2025-03-11 | 李忠洋；郭金玺；汪书刚 |
| 44 | 9.3 | 粒子编辑 | 10d | 2025-03-17 | 2025-03-28 | 李忠洋；郭金玺；汪书刚 |
| 45 | 9.4 | 点光源编辑 | 10d | 2025-04-07 | 2025-04-18 | 李忠洋；郭金玺；汪书刚 |
| 46 | 10 | **3.6.3版本开发** | 40d | 2025-05-12 | 2025-07-04 |  |
| 47 | 10.1 | 动画交互编辑 | 40d | 2025-05-12 | 2025-07-04 | 李忠洋；郭金玺；汪书刚 |
| 48 | 11 | 3DTiles数据的连通性扩展 | 40d | 2025-01-02 | 2025-02-26 | 宋钰涛；裴贺威 |
| 49 | 12 | 移动端app中目录树，属性等的实现 | 20d | 2025-03-10 | 2025-04-04 | 程凯； |
| 50 | 13 | 移动端app跟平台账户的数据对接 | 10d | 2025-04-10 | 2025-04-23 | 程凯； |
| 51 | 14 | 平台功能模块JS再封装 | 20d | 2025-07-07 | 2025-08-01 | 李忠洋；郭金玺 |
| 52 | 15 | 平台页面的嵌入式需求 | 20d | 2025-08-04 | 2025-08-29 | 李忠洋；郭金玺 |

Notes:
- 33: 接口不是一次性加完，按使用频度逐步加入
- 47: 在此任务开始前穿插了公路院的相关平台工作

| ID | WBS | Task | Duration | Start | Finish | inPeople |
| --- | --- | --- | --- | --- | --- | --- |
| 53 | 16 | **BIM分析** | 52d | 2025-04-01 | 2025-06-11 |  |
| 54 | 16.1 | 构件的碰撞检查（算法设计） | 3d | 2025-04-01 | 2025-04-03 | 王栋栋 |
| 55 | 16.2 | 构件碰撞计算的模板程序 | 5d | 2025-04-14 | 2025-04-18 | 魏家霖 |
| 56 | 16.3 | 卷帘对比 | 3d | 2025-06-09 | 2025-06-11 | 李坡 |
| 57 | 17 | **开发者中心的完善** | 6d | 2025-05-01 | 2025-05-08 |  |
| 58 | 17.1 | 单功能demo的完善 | 6d | 2025-05-01 | 2025-05-08 | 程凯 |
| 59 | 17.2 | 面向业务场景的集成化demo的制作 | 6d | 2025-05-01 | 2025-05-08 | 郭金玺，程凯 |
| 60 | 18 | sqlSugar的读写分离实现 | 5d | 2025-02-10 | 2025-02-14 | 李忠洋 |
| 61 | 19 | FTP方式下载、上传用于转换 | 5d | 2025-02-17 | 2025-02-21 | 李忠洋 |
| 62 | 20 | appFiles.sig的全体用户更新 | 2d | 2025-05-01 | 2025-05-02 | 实施部门 |
| 63 | 21 | WebGPU 多材质、指定材质的研究 | 30d | 2025-02-17 | 2025-03-28 | 王栋栋 |
| 64 | 22 | **AIGC** | 65d | 2025-03-10 | 2025-06-06 |  |
| 65 | 22.1 | 静帧画质增强 | 20d | 2025-03-10 | 2025-04-04 | 宋钰涛 |
| 66 | 22.2 | 接入文生模、图生模等功能 | 40d | 2025-04-14 | 2025-06-06 | 宋钰涛 |
| 67 | 23 | 虚拟设备的对接 | 15d | 2025-05-12 | 2025-05-30 | 王栋栋 |
| 68 | 24 | 物理仿真--科委课题的研究 | 60d | 2025-04-28 | 2025-07-18 | 魏家霖 |
| 69 | 25 | 离线查看器的二开支持 | 20d | 2025-03-03 | 2025-03-28 | 裴贺威 |
| 70 | 26 | 3.5.1中延后实现的矢量样式配置功能 | 15d | 2025-07-14 | 2025-08-01 | 李忠洋；郭金玺；汪书刚 |

Notes:
- 57: 持续进行的工作，时间任意指定，不具备参考性
- 62: 实施部门进行，中间根据情况更新
